# 116_SC_106 Tank Mixing & Dosing

How a schedule from MS Project changed from version to version. A marks actual dates.

## Version 1 (saved 2026-02-12, file 1771948628582-116_SC_106_Tank_Mixing___Dosing.mpp)

Note of the change: Automatic commit for QA

| ID | WBS | Task | Duration | Start | Finish | Predecessors | Complete | Total float | Constraint |
| --- | --- | --- | --- | --- | --- | --- | --- | --- | --- |
| 1 | 1 | **Preliminary Design** | 173d | 2024-12-06 A | 2025-08-15 A |  | 100% |  |  |
| 2 |  | RFP Due | 0d | 2024-12-06 A | 2024-12-06 A |  | 100% |  |  |
| 3 |  | Review and Award | 48d | 2024-12-06 A | 2025-02-14 A |  | 100% |  |  |
| 4 |  | Contracts | 27d | 2025-02-18 A | 2025-03-26 A | 3 | 100% |  |  |
| 5 |  | PO / NTP Issued | 38d | 2025-03-26 A | 2025-05-19 A | 4 | 100% |  |  |
| 6 |  | QA/QC Plan | 60d | 2025-05-20 A | 2025-08-15 A | 4, 5 | 100% |  |  |
| 7 |  | Subcontracts / Purchase Orders | 10d | 2025-05-20 A | 2025-06-04 A | 4, 5 | 100% |  | start no earlier than 2023-03-14 |
| 8 | 2 | **Final Design** | 131d | 2025-06-05 A | 2025-12-12 A |  | 100% |  |  |
| 9 |  | Design Investigation and Survey | 20d | 2025-06-05 A | 2025-07-02 A | 7 | 100% |  | start no earlier than 2025-06-05 |
| 10 | 2.2 | **50% Design** | 37d | 2025-07-03 A | 2025-08-26 A |  | 100% |  |  |
| 11 |  | 50% Design Submittal | 20d | 2025-07-03 A | 2025-08-01 A | 9 | 100% |  |  |
| 12 |  | 50% Design CWS Submittal Review | 15d | 2025-08-04 A | 2025-08-22 A | 11 | 100% |  |  |
| 13 |  | 50% Design Submittal Workshop | 2d | 2025-08-25 A | 2025-08-26 A | 12 | 100% |  |  |
| 14 | 2.3 | **75% Design** | 37d | 2025-08-27 A | 2025-10-20 A |  | 100% |  |  |
| 15 |  | 75% Design Submittal | 20d | 2025-08-27 A | 2025-09-25 A | 13 | 100% |  |  |
| 16 |  | 75% Design CWS Submittal Review | 15d | 2025-09-26 A | 2025-10-16 A | 15 | 100% |  |  |
| 17 |  | 75% Design Submittal Workshop | 2d | 2025-10-17 A | 2025-10-20 A | 16 | 100% |  |  |
| 18 | 2.4 | **100% Design** | 37d | 2025-10-21 A | 2025-12-12 A |  | 100% |  |  |
| 19 |  | 100% Design Submittal | 20d | 2025-10-21 A | 2025-11-17 A | 17 | 100% |  |  |
| 20 |  | 100% Design CWS Submittal | 15d | 2025-11-18 A | 2025-12-10 A | 19 | 100% |  |  |
| 21 |  | 100% Design Submittal Workshop | 2d | 2025-12-11 A | 2025-12-12 A | 20 | 100% |  |  |
| 22 | 3 | **Final Permitting** | 143d | 2025-12-15 A | 2026-07-07 |  | 3% | 94d |  |
| 23 |  | Planning Permit Application | 45d | 2025-12-15 A | 2026-02-19 | 21 |  | 192d |  |
| 24 |  | Grading/Draining Permit Application | 45d | 2025-12-15 A | 2026-02-19 | 21 |  | 192d |  |
| 25 |  | Building Permit Application | 143d | 2025-12-15 A | 2026-07-07 | 21 |  | 0d |  |
| 26 |  | Issue for Construction Design Submittal | 8d | 2025-12-15 A | 2025-12-29 A | 21 | 100% |  |  |
| 27 |  | Issue for Construction Design CWS Submittal Review | 16d | 2025-12-30 | 2026-01-21 | 26 |  | 116d |  |
| 28 |  | Project Drawings Issued for Construction | 3d | 2026-01-22 | 2026-01-26 | 27 |  | 116d |  |
| 29 | 4 | **Project Submittals and Procurement** | 130d | 2025-08-25 A | 2026-03-04 |  | 57% | 92d |  |
| 30 | 4.1 | **Project Submittals** | 30d | 2025-08-25 A | 2025-10-07 A |  | 100% |  |  |
| 31 |  | Chemical Equipment Submittals | 30d | 2025-08-25 A | 2025-10-07 A | 12 | 100% |  |  |
| 32 |  | Misc Materials Submittals | 30d | 2025-08-25 A | 2025-10-07 A | 31SS | 100% |  |  |
| 33 |  | Pipe and Fitting Submittals | 30d | 2025-08-25 A | 2025-10-07 A | 31SS | 100% |  |  |
| 34 | 4.2 | **Procurement** | 100d | 2025-10-08 A | 2026-03-04 |  | 29% | 92d |  |
| 35 |  | Chemical Equipment Procurement | 100d | 2025-10-08 A | 2026-03-04 | 31 |  | 92d |  |
| 36 |  | Pipe and Fitting and Misc Materials Procurement | 40d | 2025-10-08 A | 2025-12-04 A | 32, 33 | 100% |  |  |
| 37 | 5 | **Construction** | 62d | 2026-07-02 A | 2026-09-25 |  |  | 0d |  |
| 38 |  | USA Site | 3d | 2026-07-02 A | 2026-07-06 |  |  | 1d | start no earlier than 2026-09-24 |
| 39 |  | Pothole Site | 3d | 2026-07-08 | 2026-07-10 | 25, 28, 38 |  | 0d |  |
| 40 | 5.3 | **Construction for Site Improvements** | 55d | 2026-07-13 | 2026-09-25 |  |  | 0d |  |
| 41 |  | Grade and Pour Pad / Install FRP Building | 15d | 2026-07-13 | 2026-07-31 | 35, 39 |  | 0d |  |
| 42 |  | Install Underground Water / Chemical Conduit | 5d | 2026-08-03 | 2026-08-07 | 41 |  | 0d |  |
| 43 |  | Install Underground Electrical | 2d | 2026-08-10 | 2026-08-11 | 42 |  | 0d |  |
| 44 |  | Install Conduits on Tank | 6d | 2026-08-12 | 2026-08-19 | 43 |  | 0d |  |
| 45 |  | Install Chemical Injection System | 6d | 2026-08-20 | 2026-08-27 | 41, 44 |  | 0d |  |
| 46 |  | Electrical Install | 11d | 2026-08-28 | 2026-09-11 | 45 |  | 0d |  |
| 47 |  | Install Eye Wash and Sample Station | 4d | 2026-08-28 | 2026-09-02 | 45 |  | 7d |  |
| 48 |  | Cleanup and Demobe | 5d | 2026-09-21 | 2026-09-25 | 51 |  | 0d |  |
| 49 | 6 | **Startup and Testing** | 21d? | 2026-09-14 | 2026-10-12 |  |  | 0d |  |
| 50 |  | Address Punchlist Items | 10d | 2026-09-14 | 2026-09-25 | 46, 47 |  | 36d |  |
| 51 |  | Startup and Testing | 5d | 2026-09-14 | 2026-09-18 | 46, 47 |  | 0d |  |
| 52 | 6.3 | **Final Inspection By Authority Having Jurisdiction** | 20d? | 2026-09-14 | 2026-10-09 |  |  | 25d |  |
| 53 |  | City or Fire Department Sign-off | 15d | 2026-09-14 | 2026-10-02 | 46, 47 |  | 30d |  |
| 54 |  | DDW Permit Amendment Approval | 10d | 2026-09-21 | 2026-10-02 | 51 |  | 29d |  |
| 55 |  | Planning Inspection | 15d | 2026-09-14 | 2026-10-02 | 46, 47 |  | 25d |  |
| 56 |  | Station Placed in Service | 1d? | 2026-10-05 | 2026-10-05 | 54 |  | 29d |  |
| 57 |  | Final AHJ Punchlist Items | 5d | 2026-10-05 | 2026-10-09 | 55 |  | 25d |  |
| 58 |  | All Inspections Completed | 1d? | 2026-10-12 | 2026-10-12 | 53, 54, 55, 57 |  | 25d |  |
| 59 | 7 | **Final Close-Out** | 36d? | 2026-09-28 | 2026-11-16 |  |  | 0d |  |
| 60 |  | Cleanup and Demobe | 5d | 2026-09-28 | 2026-10-02 | 48 |  | 0d |  |
| 61 |  | Receive and Approve All Outstanding Invoices | 15d | 2026-10-05 | 2026-10-23 | 60 |  | 0d |  |
| 62 |  | Complete Financial As-built & Final Accounting Approval | 15d | 2026-10-26 | 2026-11-13 | 61 |  | 0d |  |
| 63 |  | Final Close-Out Completed | 1d? | 2026-11-16 | 2026-11-16 | 56, 62 |  | 0d |  |

## Version 2 (saved 2026-02-20, file 1771584508026-116_SC_123_Tank_Mixing___Dosing.mpp)

Note of the change: Update timeline to differentiate between completed and pending projects

Last finish 2026-11-16 → 2026-10-26 (-21d).

Added:

| ID | Task | Duration | Start | Finish |
| --- | --- | --- | --- | --- |
| 41 | **Installation** | 32d | 2026-08-03 A | 2026-09-15 |

Removed: 40 Construction for Site Improvements; 60 Cleanup and Demobe

Changed:

| ID | Task | Start | Finish | Duration | Total float | Predecessors | Other |
| --- | --- | --- | --- | --- | --- | --- | --- |
| 1 | **Preliminary Design** |  | 2025-08-15 A → 2025-08-13 A (-2d) | 173d → 171d |  |  |  |
| 6 | QA/QC Plan |  | 2025-08-15 A → 2025-08-13 A (-2d) |  |  |  |  |
| 7 | Subcontracts / Purchase Orders |  |  | 10d → 11d |  |  | constraint start no earlier than 2023-03-14 → none |
| 9 | Design Investigation and Survey |  |  |  |  | 7 → none |  |
| 22 | **Final Permitting** |  | 2026-07-07 → 2026-07-02 (-5d) | 143d → 140d | 94d → 82d |  |  |
| 25 | Building Permit Application |  | 2026-07-07 → 2026-07-02 (-5d) | 143d → 140d | 0d → 2d |  |  |
| 27 | Issue for Construction Design CWS Submittal Review | 2025-12-30 A |  |  | 116d → 0d |  |  |
| 28 | Project Drawings Issued for Construction | 2026-01-22 A |  |  | 116d → 115d |  |  |
| 31 | Chemical Equipment Submittals |  |  |  |  | 12 → 11 |  |
| 37 | **Construction** | 2026-07-02 A → 2026-01-08 A (-175d) | 2026-09-25 → 2026-09-15 (-10d) | 62d → 179d | 0d → 8d |  |  |
| 38 | USA Site |  |  |  | 1d → 0d | none → 25FS-3d | constraint start no earlier than 2026-09-24 → none |
| 39 | Pothole Site | 2026-07-08 → 2026-01-08 A (-181d) |  | 3d → 4d |  |  |  |
| 40 | Grade and Pour Pad / Install FRP Building | 2026-07-13 A |  |  |  |  |  |
| 42 | Install Underground Water / Chemical Conduit | 2026-08-03 A | 2026-08-07 → 2026-08-10 (+3d) | 5d → 6d |  | 40 → 39, 40 |  |
| 43 | Install Underground Electrical | 2026-08-10 → 2026-08-11 A (+1d) | 2026-08-11 → 2026-08-13 (+2d) | 2d → 3d |  |  |  |
| 44 | Install Conduits on Tank | 2026-08-12 → 2026-08-14 (+2d) | 2026-08-19 → 2026-08-21 (+2d) |  |  |  |  |
| 45 | Install Chemical Injection System | 2026-08-20 → 2026-08-24 (+4d) | 2026-08-27 → 2026-08-31 (+4d) |  |  |  |  |
| 46 | Electrical Install | 2026-08-28 → 2026-09-01 (+4d) | 2026-09-11 → 2026-09-15 (+4d) |  | 0d → 8d |  |  |
| 47 | Install Eye Wash and Sample Station | 2026-08-28 → 2026-09-01 (+4d) | 2026-09-02 → 2026-09-04 (+2d) |  | 7d → 0d |  |  |
| 48 | **Startup and Testing** | 2026-09-14 → 2026-09-16 (+2d) | 2026-10-12 → 2026-10-14 (+2d) | 21d? → 21d | 0d → 8d |  |  |
| 49 | Address Punchlist Items | 2026-09-14 → 2026-09-16 (+2d) | 2026-09-25 → 2026-09-29 (+4d) |  | 36d → 19d |  |  |
| 50 | Startup and Testing | 2026-09-14 → 2026-09-16 (+2d) | 2026-09-18 → 2026-09-22 (+4d) |  | 0d → 12d |  |  |
| 51 | **Final Inspection By Authority Having Jurisdiction** | 2026-09-14 → 2026-09-16 (+2d) | 2026-10-09 → 2026-10-13 (+4d) | 20d? → 20d | 25d → 8d |  |  |
| 52 | City or Fire Department Sign-off | 2026-09-14 → 2026-09-16 (+2d) | 2026-10-02 → 2026-10-06 (+4d) |  | 30d → 13d |  |  |
| 53 | DDW Permit Amendment Approval | 2026-09-21 → 2026-09-23 (+2d) | 2026-10-02 → 2026-10-06 (+4d) |  | 29d → 12d |  |  |
| 54 | Planning Inspection | 2026-09-14 → 2026-09-16 (+2d) | 2026-10-02 → 2026-10-06 (+4d) |  | 25d → 8d |  |  |
| 55 | Station Placed in Service | 2026-10-05 → 2026-10-07 (+2d) | 2026-10-05 → 2026-10-07 (+2d) | 1d? → 1d | 29d → 12d |  |  |
| 56 | Final AHJ Punchlist Items | 2026-10-05 → 2026-10-07 (+2d) | 2026-10-09 → 2026-10-13 (+4d) |  | 25d → 8d |  |  |
| 57 | All Inspections Completed | 2026-10-12 → 2026-10-14 (+2d) | 2026-10-12 → 2026-10-14 (+2d) | 1d? → 1d | 25d → 8d |  |  |
| 58 | **Final Close-Out** | 2026-09-28 → 2026-09-07 (-21d) | 2026-11-16 → 2026-10-26 (-21d) | 36d? → 36d |  |  |  |
| 59 | Cleanup and Demobe | 2026-09-21 → 2026-09-07 (-14d) | 2026-09-25 → 2026-09-11 (-14d) |  |  | 50 → 47 |  |
| 60 | Receive and Approve All Outstanding Invoices | 2026-10-05 → 2026-09-14 (-21d) | 2026-10-23 → 2026-10-02 (-21d) |  |  | Cleanup and Demobe → 59 |  |
| 61 | Complete Financial As-built & Final Accounting Approval | 2026-10-26 → 2026-10-05 (-21d) | 2026-11-13 → 2026-10-23 (-21d) |  |  |  |  |
| 62 | Final Close-Out Completed | 2026-11-16 → 2026-10-26 (-21d) | 2026-11-16 → 2026-10-26 (-21d) | 1d? → 1d |  |  |  |
